# Training Project Schedule.xml

How a schedule from MS Project XML changed from version to version. A marks actual dates.

## Version 1 (data date 2016-01-03, saved 2015-07-07, file Training Project Schedule.xml)

Note of the change: wqreqer

| ID | WBS | Task | Duration | Start | Finish | Predecessors | Total float | Constraint |
| --- | --- | --- | --- | --- | --- | --- | --- | --- |
| 1 | 1 | **Office Building, Core & Shell** | 323d | 2016-01-04 | 2017-03-29 |  | 0d |  |
| 2 | 1 | **Pre Construction** | 20d | 2016-01-04 | 2016-01-29 |  | 0d |  |
| 3 |  | Notice to Proceed | 0d | 2016-01-04 | 2016-01-04 |  | 0d | must start on 2016-01-04 |
| 4 |  | Building Permit | 20d | 2016-01-04 | 2016-01-29 | 3 | 10d |  |
| 5 |  | Award Subcontractors | 10d | 2016-01-04 | 2016-01-15 | 3 | 0d |  |
| 6 |  | Perimeter Fence | 3d | 2016-01-25 | 2016-01-27 | 5FS+5d | 297d | start no earlier than 2015-03-23 |
| 7 |  | Temporary Hard Standing | 1d | 2016-01-27 | 2016-01-27 | 6FS-1d | 297d |  |
| 8 |  | Field Office | 2d | 2016-01-28 | 2016-01-29 | 7 | 297d |  |
| 9 | 2 | **Material Procurement** | 70d | 2016-01-18 | 2016-04-22 |  | 0d |  |
| 10 |  | Structural Steel | 65d | 2016-01-18 | 2016-04-15 | 5 | 0d |  |
| 11 |  | Glass Curtain Wall | 60d | 2016-01-18 | 2016-04-08 | 5 | 101d |  |
| 12 |  | Elevator | 65d | 2016-01-18 | 2016-04-15 | 5 | 152d |  |
| 13 |  | MEP Equipment | 70d | 2016-01-18 | 2016-04-22 | 5 | 132d |  |
| 14 | 3 | **Construction** | 257d | 2016-02-01 | 2017-01-24 |  | 10d |  |
| 15 | 3.1 | **Site Construction** | 247d | 2016-02-01 | 2017-01-10 |  | 10d |  |
| 16 |  | Foundation Excavation | 5d | 2016-02-01 | 2016-02-05 | 4 | 10d |  |
| 17 |  | Structural Piles | 20d | 2016-02-08 | 2016-03-04 | 16 | 10d |  |
| 18 |  | Site Utilities | 40d | 2016-02-01 | 2016-03-25 | 4 | 174d |  |
| 19 |  | Backfill / Compact Foundation Excavation | 5d | 2016-03-21 | 2016-03-25 | 26 | 45d |  |
| 20 |  | Crushed Gravel, Ground Floor | 5d | 2016-06-13 | 2016-06-17 | 53, 27 | 0d |  |
| 21 |  | Road / Parking Lot Preparation | 20d | 2016-11-23 | 2016-12-20 | 43, 82 | 29d |  |
| 22 |  | Road / Parking Lot Pavement | 6d | 2016-12-21 | 2016-12-28 | 21 | 29d |  |
| 23 |  | Site Improvements | 25d | 2016-11-23 | 2016-12-27 | 82 | 20d |  |
| 24 |  | Site Plantings | 10d | 2016-12-28 | 2017-01-10 | 23 | 20d |  |
| 25 | 3.2 | **Concrete** | 89d | 2016-03-07 | 2016-07-07 |  | 0d |  |
| 26 |  | Pile Caps | 10d | 2016-03-07 | 2016-03-18 | 17 | 10d |  |
| 27 |  | Grade Beams | 10d | 2016-03-28 | 2016-04-08 | 19, 26 | 45d |  |
| 28 |  | Slab on Grade | 3d | 2016-06-20 | 2016-06-22 | 20 | 0d |  |
| 29 | 3.2.5 | **Slab on Deck, 1st Floor** | 9d | 2016-06-23 | 2016-07-05 |  | 0d |  |
| 30 | 3.2.5.1 | **Slab on Deck, 1st Floor, Area 1** | 4d | 2016-06-23 | 2016-06-28 |  | 0d |  |
| 31 |  | Slab on Deck, 1st Floor, Area 1A | 1d | 2016-06-23 | 2016-06-23 | 28 | 0d |  |
| 32 |  | Slab on Deck, 1st Floor, Area 1B | 1d | 2016-06-24 | 2016-06-24 | 31 | 0d |  |
| 33 |  | Slab on Deck, 1st Floor, Area 1C | 1d | 2016-06-27 | 2016-06-27 | 32 | 0d |  |
| 34 |  | Slab on Deck, 1st Floor, Area 1D | 1d | 2016-06-28 | 2016-06-28 | 33 | 0d |  |
| 35 | 3.2.5.2 | **Slab on Deck, 1st Floor, Area 2** | 2d | 2016-06-29 | 2016-06-30 |  | 0d |  |
| 36 |  | Slab on Deck, 1st Floor, Area 2A | 1d | 2016-06-29 | 2016-06-29 | 34 | 0d |  |
| 37 |  | Slab on Deck, 1st Floor, Area 2B | 1d | 2016-06-30 | 2016-06-30 | 36 | 0d |  |
| 38 | 3.2.5.3 | **Slab on Deck, 1st Floor, Area 3** | 3d | 2016-07-01 | 2016-07-05 | 35 | 0d |  |
| 39 |  | Slab on Deck, 1st Floor, Area 3A | 1d | 2016-07-01 | 2016-07-01 |  | 0d |  |
| 40 |  | Slab on Deck, 1st Floor, Area 3B | 1d | 2016-07-04 | 2016-07-04 | 39 | 0d |  |
| 41 |  | Slab on Deck, 1st Floor, Area 3C | 1d | 2016-07-05 | 2016-07-05 | 40 | 0d |  |
| 42 |  | Slab on Deck, 2nd Floor / Low Roof | 1d | 2016-07-06 | 2016-07-06 | 29 | 0d |  |
| 43 |  | Slab on Deck, High Roof | 1d | 2016-07-07 | 2016-07-07 | 42, 52 | 0d |  |
| 44 | 3.3 | **Metals** | 195d | 2016-03-30 | 2016-12-27 |  | 10d |  |
| 45 |  | Base Plates | 3d | 2016-03-30 | 2016-04-01 | 26FS+7d | 10d |  |
| 46 |  | Structural Framing, Area 1 | 8d | 2016-04-18 | 2016-04-27 | 45, 10 | 0d |  |
| 47 |  | Structural Framing, Area 2 | 8d | 2016-04-28 | 2016-05-09 | 46 | 0d |  |
| 48 |  | Structural Framing, Area 3 | 10d | 2016-05-10 | 2016-05-23 | 47 | 0d |  |
| 49 |  | Structural Framing, Area 4 | 9d | 2016-05-24 | 2016-06-03 | 48 | 0d |  |
| 50 |  | Plumb/ Bolt / Weld Area 1 | 5d | 2016-04-28 | 2016-05-04 | 46 | 235d |  |
| 51 |  | Plumb/ Bolt / Weld Area 2 | 5d | 2016-05-10 | 2016-05-16 | 47 | 227d |  |
| 52 |  | Plumb/ Bolt / Weld Area 3 | 5d | 2016-05-24 | 2016-05-30 | 48 | 27d |  |
| 53 |  | Plumb/ Bolt / Weld Area 4 | 5d | 2016-06-06 | 2016-06-10 | 49 | 0d |  |
| 54 |  | Exterior Stairs | 8d | 2016-08-30 | 2016-09-08 | 75 | 103d |  |
| 55 |  | Interior Stairs, Ground Floor | 5d | 2016-07-06 | 2016-07-12 | 29 | 145d |  |
| 56 |  | Interior Stairs, First Floor | 5d | 2016-07-07 | 2016-07-13 | 42 | 144d |  |
| 57 |  | Handrails | 5d | 2016-12-21 | 2016-12-27 | 55, 56, 54, 84 | 30d |  |
| 58 | 3.4 | **Corrugated Metal Siding** | 47d | 2016-07-08 | 2016-09-12 |  | 0d |  |
| 59 |  | Exterior Metal Siding / Backup Framing (Front) | 6d | 2016-07-08 | 2016-07-15 | 43, 27 | 0d |  |
| 60 |  | Exterior Metal Siding / Backup Framing (Left) | 10d | 2016-07-18 | 2016-07-29 | 59 | 0d |  |
| 61 |  | Exterior Metal Siding / Backup Framing (Back) | 12d | 2016-08-01 | 2016-08-16 | 60 | 0d |  |
| 62 |  | Exterior Metal Siding / Backup Framing (Right) | 7d | 2016-08-17 | 2016-08-25 | 61 | 0d |  |
| 63 |  | Exterior Metal Siding / Backup Framing (Mechanical Room) | 12d | 2016-08-26 | 2016-09-12 | 62, 42FS+7d | 0d |  |
| 64 | 3.55 | **Masonry** | 12d | 2016-07-04 | 2016-07-19 |  | 85d |  |
| 65 |  | Blockwork / Elevator Shaft, Ground Floor | 4d | 2016-07-04 | 2016-07-07 | 28FS+7d | 85d |  |
| 66 |  | Blockwork / Elevator Shaft, 1st Floor | 4d | 2016-07-08 | 2016-07-13 | 65 | 85d |  |
| 67 |  | Blockwork / Elevator Shaft, 2nd Floor | 4d | 2016-07-14 | 2016-07-19 | 66 | 85d |  |
| 68 | 3.5 | **Doors and Windows** | 98d | 2016-07-18 | 2016-11-30 |  | 31d |  |
| 69 |  | Exterior Doors, Frames, Hardware | 4d | 2016-08-30 | 2016-09-02 | 75 | 112d |  |
| 70 |  | Interior Doors, Frames, Hardware | 6d | 2016-11-23 | 2016-11-30 | 81, 80, 79 | 49d |  |

| ID | WBS | Task | Duration | Start | Finish | Predecessors | Total float |
| --- | --- | --- | --- | --- | --- | --- | --- |
| 71 |  | Glass Entry Doors | 7d | 2016-08-04 | 2016-08-12 | 72FF | 127d |
| 72 |  | Glass Curtain Wall (Front) | 20d | 2016-07-18 | 2016-08-12 | 59, 11, 43 | 31d |
| 73 |  | Punched Windows (Left) | 4d | 2016-08-15 | 2016-08-18 | 60, 72 | 31d |
| 74 |  | Punched Windows (Back) | 6d | 2016-08-19 | 2016-08-26 | 61, 73 | 31d |
| 75 |  | Punched Windows (Right) | 1d | 2016-08-29 | 2016-08-29 | 62, 74 | 31d |
| 76 |  | Punched Windows (Mechanical Room) | 1d | 2016-09-13 | 2016-09-13 | 63, 75 | 141d |
| 77 |  | Glass Railings | 4d | 2016-11-23 | 2016-11-28 | 82 | 51d |
| 78 | 3.6 | **Finishes** | 50d | 2016-10-12 | 2016-12-20 |  | 20d |
| 79 |  | Core Walls, Ground Floor | 10d | 2016-10-12 | 2016-10-25 | 87, 75 | 22d |
| 80 |  | Core Walls, 1st Floor | 10d | 2016-10-26 | 2016-11-08 | 79 | 22d |
| 81 |  | Core Walls, 2nd Floor | 10d | 2016-11-09 | 2016-11-22 | 80 | 22d |
| 82 |  | Perimeter Drywall | 20d | 2016-10-26 | 2016-11-22 | 88 | 20d |
| 83 |  | Toilet Room Finishes | 15d | 2016-11-23 | 2016-12-13 | 98, 99, 81 | 22d |
| 84 |  | Misc. Finishes | 20d | 2016-11-23 | 2016-12-20 | 82 | 20d |
| 85 | 3.7 | **Thermal and Moisture Protection** | 27d | 2016-09-19 | 2016-10-25 |  | 0d |
| 86 |  | Roofing, Low Roof | 12d | 2016-09-19 | 2016-10-04 | 42, 63, 91 | 0d |
| 87 |  | Roofing, High Roof | 5d | 2016-10-05 | 2016-10-11 | 86, 43 | 0d |
| 88 |  | Roof Parapet Cap / Trim | 10d | 2016-10-12 | 2016-10-25 | 75, 86, 87 | 0d |
| 89 |  | Temporary Roof at Skylight | 1d | 2016-10-12 | 2016-10-12 | 87 | 115d |
| 90 | 3.8 | **Specialties** | 27d | 2016-09-13 | 2016-10-19 |  | 0d |
| 91 |  | Mechanical Room Louvers | 4d | 2016-09-13 | 2016-09-16 | 63 | 0d |
| 92 |  | Glass Skylight | 5d | 2016-10-13 | 2016-10-19 | 89, 75 | 115d |
| 93 | 3.9 | **Conveying Systems** | 90d | 2016-06-13 | 2016-10-14 |  | 112d |
| 94 |  | Elevator | 50d | 2016-07-20 | 2016-09-27 | 12, 67 | 85d |
| 95 |  | Temporary Hoist | 90d | 2016-06-13 | 2016-10-14 | 53 | 118d |
| 96 | 3.10 | **Mechanical** | 135d | 2016-07-20 | 2017-01-24 |  | 0d |
| 97 | 3.10.1 | **Plumbing** | 113d | 2016-07-20 | 2016-12-23 |  | 22d |
| 98 |  | Domestic Water | 20d | 2016-07-20 | 2016-08-16 | 18, 67 | 92d |
| 99 |  | Sanitary Sewer | 20d | 2016-07-20 | 2016-08-16 | 18, 67 | 92d |
| 100 |  | Toilet Room Fixtures / Trim | 8d | 2016-12-14 | 2016-12-23 | 98, 13, 83, 99 | 22d |
| 101 | 3.10.2 | **HVAC** | 65d | 2016-10-26 | 2017-01-24 |  | 0d |
| 102 |  | Air Handling Unit | 20d | 2016-10-26 | 2016-11-22 | 13, 88 | 0d |
| 103 |  | Vertical Ductwork | 10d | 2016-11-23 | 2016-12-06 | 43, 67, 102, 13 | 0d |
| 104 |  | Horizontal Ductwork | 25d | 2016-12-07 | 2017-01-10 | 103, 91, 13 | 0d |
| 105 |  | Registers / Grilles / Diffusers | 10d | 2017-01-11 | 2017-01-24 | 104, 13 | 0d |
| 106 | 3.10.3 | **Electrical** | 55d | 2016-10-12 | 2016-12-27 |  | 20d |
| 107 |  | Main Switch Gear / Panelboards | 25d | 2016-10-26 | 2016-11-29 | 88, 18, 13 | 30d |
| 108 |  | Electrical Distribution | 35d | 2016-10-12 | 2016-11-29 | 87, 107FF | 30d |
| 109 |  | Electrical Devices | 10d | 2016-11-30 | 2016-12-13 | 108 | 30d |
| 110 |  | Light Fixtures | 5d | 2016-12-21 | 2016-12-27 | 108, 13, 84 | 20d |
| 111 | 4 | **Project Completion** | 46d | 2017-01-25 | 2017-03-29 |  | 0d |
| 112 |  | Commissioning of Mechanical Systems | 10d | 2017-01-25 | 2017-02-07 | 94, 105, 109, 100, 110 | 0d |
| 113 |  | Final Inspections | 10d | 2017-02-08 | 2017-02-21 | 24, 22, 112, 69, 70, 71, 77, 57 | 0d |
| 114 |  | Punch List | 10d | 2017-02-22 | 2017-03-07 | 113 | 0d |
| 115 |  | Final Clean | 10d | 2017-03-08 | 2017-03-21 | 113, 83, 84, 114 | 0d |
| 116 |  | Site De-Mobilization | 5d | 2017-03-22 | 2017-03-28 | 115, 8 | 0d |
| 117 |  | Certificate of Occupancy | 0d | 2017-03-07 | 2017-03-07 | 113, 114 | 15d |
| 118 |  | Project Turnover | 1d | 2017-03-29 | 2017-03-29 | 117, 116, 115, 114 | 0d |

## Version 2 (data date 2016-03-01, saved 2015-07-07, file Training Project Schedule Updated.xml)

Note of the change: wqreqer

Last finish 2017-03-29 → 2017-04-26 (+28d). Complete tasks 0 → 6.

Changed:

| ID | Task | Start | Finish | Complete | Total float | Other |
| --- | --- | --- | --- | --- | --- | --- |
| 1 | **Office Building, Core & Shell** | 2016-01-04 → 2016-02-01 A (+28d) | 2017-03-29 → 2017-04-26 (+28d) | 0% → 7% |  |  |
| 2 | **Pre Construction** | 2016-01-04 → 2016-02-01 A (+28d) | 2016-01-29 → 2016-02-26 A (+28d) | 0% → 100% | 0d → none |  |
| 3 | Notice to Proceed | 2016-01-04 → 2016-02-01 A (+28d) | 2016-01-04 → 2016-02-01 A (+28d) | 0% → 100% | 0d → none | constraint must start on 2016-01-04 → must start on 2016-02-01 |
| 4 | Building Permit | 2016-01-04 → 2016-02-01 A (+28d) | 2016-01-29 → 2016-02-26 A (+28d) | 0% → 100% | 10d → none |  |
| 5 | Award Subcontractors | 2016-01-04 → 2016-02-01 A (+28d) | 2016-01-15 → 2016-02-12 A (+28d) | 0% → 100% | 0d → none |  |
| 6 | Perimeter Fence | 2016-01-25 → 2016-02-22 A (+28d) | 2016-01-27 → 2016-02-24 A (+28d) | 0% → 100% | 297d → none | constraint start no earlier than 2015-03-23 → start no earlier than 2015-04-20 |
| 7 | Temporary Hard Standing | 2016-01-27 → 2016-02-24 A (+28d) | 2016-01-27 → 2016-02-24 A (+28d) | 0% → 100% | 297d → none |  |
| 8 | Field Office | 2016-01-28 → 2016-02-25 A (+28d) | 2016-01-29 → 2016-02-26 A (+28d) | 0% → 100% | 297d → none |  |
| 9 | **Material Procurement** | 2016-01-18 → 2016-02-15 A (+28d) | 2016-04-22 → 2016-05-20 (+28d) | 0% → 17% | 0d → 147d |  |
| 10 | Structural Steel | 2016-01-18 → 2016-02-15 A (+28d) | 2016-04-15 → 2016-05-13 (+28d) | 0% → 17% |  |  |
| 11 | Glass Curtain Wall | 2016-01-18 → 2016-02-15 A (+28d) | 2016-04-08 → 2016-05-06 (+28d) | 0% → 18% |  |  |
| 12 | Elevator | 2016-01-18 → 2016-02-15 A (+28d) | 2016-04-15 → 2016-05-13 (+28d) | 0% → 17% |  |  |
| 13 | MEP Equipment | 2016-01-18 → 2016-02-15 A (+28d) | 2016-04-22 → 2016-05-20 (+28d) | 0% → 16% |  |  |
| 14 | **Construction** | 2016-02-01 → 2016-02-29 A (+28d) | 2017-01-24 → 2017-02-21 (+28d) |  | 10d → 46d |  |
| 15 | **Site Construction** | 2016-02-01 → 2016-02-29 A (+28d) | 2017-01-10 → 2017-02-07 (+28d) | 0% → 1% | 10d → 20d |  |
| 16 | Foundation Excavation | 2016-02-01 → 2016-02-29 A (+28d) | 2016-02-05 → 2016-03-04 (+28d) | 0% → 20% |  |  |
| 17 | Structural Piles | 2016-02-08 → 2016-03-07 (+28d) | 2016-03-04 → 2016-04-01 (+28d) |  |  |  |
| 18 | Site Utilities | 2016-02-01 → 2016-02-29 A (+28d) | 2016-03-25 → 2016-04-22 (+28d) | 0% → 3% |  |  |
| 19 | Backfill / Compact Foundation Excavation | 2016-03-21 → 2016-04-18 (+28d) | 2016-03-25 → 2016-04-22 (+28d) |  |  |  |
| 20 | Crushed Gravel, Ground Floor | 2016-06-13 → 2016-07-11 (+28d) | 2016-06-17 → 2016-07-15 (+28d) |  |  |  |
| 21 | Road / Parking Lot Preparation | 2016-11-23 → 2016-12-21 (+28d) | 2016-12-20 → 2017-01-17 (+28d) |  |  |  |
| 22 | Road / Parking Lot Pavement | 2016-12-21 → 2017-01-18 (+28d) | 2016-12-28 → 2017-01-25 (+28d) |  |  |  |
| 23 | Site Improvements | 2016-11-23 → 2016-12-21 (+28d) | 2016-12-27 → 2017-01-24 (+28d) |  |  |  |
| 24 | Site Plantings | 2016-12-28 → 2017-01-25 (+28d) | 2017-01-10 → 2017-02-07 (+28d) |  |  |  |
| 25 | **Concrete** | 2016-03-07 → 2016-04-04 (+28d) | 2016-07-07 → 2016-08-04 (+28d) |  |  |  |
| 26 | Pile Caps | 2016-03-07 → 2016-04-04 (+28d) | 2016-03-18 → 2016-04-15 (+28d) |  |  |  |
| 27 | Grade Beams | 2016-03-28 → 2016-04-25 (+28d) | 2016-04-08 → 2016-05-06 (+28d) |  |  |  |
| 28 | Slab on Grade | 2016-06-20 → 2016-07-18 (+28d) | 2016-06-22 → 2016-07-20 (+28d) |  |  |  |
| 29 | **Slab on Deck, 1st Floor** | 2016-06-23 → 2016-07-21 (+28d) | 2016-07-05 → 2016-08-02 (+28d) |  |  |  |
| 30 | **Slab on Deck, 1st Floor, Area 1** | 2016-06-23 → 2016-07-21 (+28d) | 2016-06-28 → 2016-07-26 (+28d) |  |  |  |
| 31 | Slab on Deck, 1st Floor, Area 1A | 2016-06-23 → 2016-07-21 (+28d) | 2016-06-23 → 2016-07-21 (+28d) |  |  |  |
| 32 | Slab on Deck, 1st Floor, Area 1B | 2016-06-24 → 2016-07-22 (+28d) | 2016-06-24 → 2016-07-22 (+28d) |  |  |  |
| 33 | Slab on Deck, 1st Floor, Area 1C | 2016-06-27 → 2016-07-25 (+28d) | 2016-06-27 → 2016-07-25 (+28d) |  |  |  |
| 34 | Slab on Deck, 1st Floor, Area 1D | 2016-06-28 → 2016-07-26 (+28d) | 2016-06-28 → 2016-07-26 (+28d) |  |  |  |
| 35 | **Slab on Deck, 1st Floor, Area 2** | 2016-06-29 → 2016-07-27 (+28d) | 2016-06-30 → 2016-07-28 (+28d) |  |  |  |
| 36 | Slab on Deck, 1st Floor, Area 2A | 2016-06-29 → 2016-07-27 (+28d) | 2016-06-29 → 2016-07-27 (+28d) |  |  |  |
| 37 | Slab on Deck, 1st Floor, Area 2B | 2016-06-30 → 2016-07-28 (+28d) | 2016-06-30 → 2016-07-28 (+28d) |  |  |  |
| 38 | **Slab on Deck, 1st Floor, Area 3** | 2016-07-01 → 2016-07-29 (+28d) | 2016-07-05 → 2016-08-02 (+28d) |  |  |  |
| 39 | Slab on Deck, 1st Floor, Area 3A | 2016-07-01 → 2016-07-29 (+28d) | 2016-07-01 → 2016-07-29 (+28d) |  |  |  |
| 40 | Slab on Deck, 1st Floor, Area 3B | 2016-07-04 → 2016-08-01 (+28d) | 2016-07-04 → 2016-08-01 (+28d) |  |  |  |
| 41 | Slab on Deck, 1st Floor, Area 3C | 2016-07-05 → 2016-08-02 (+28d) | 2016-07-05 → 2016-08-02 (+28d) |  |  |  |
| 42 | Slab on Deck, 2nd Floor / Low Roof | 2016-07-06 → 2016-08-03 (+28d) | 2016-07-06 → 2016-08-03 (+28d) |  |  |  |
| 43 | Slab on Deck, High Roof | 2016-07-07 → 2016-08-04 (+28d) | 2016-07-07 → 2016-08-04 (+28d) |  |  |  |
| 44 | **Metals** | 2016-03-30 → 2016-04-27 (+28d) | 2016-12-27 → 2017-01-24 (+28d) |  |  |  |
| 45 | Base Plates | 2016-03-30 → 2016-04-27 (+28d) | 2016-04-01 → 2016-04-29 (+28d) |  |  |  |
| 46 | Structural Framing, Area 1 | 2016-04-18 → 2016-05-16 (+28d) | 2016-04-27 → 2016-05-25 (+28d) |  |  |  |
| 47 | Structural Framing, Area 2 | 2016-04-28 → 2016-05-26 (+28d) | 2016-05-09 → 2016-06-06 (+28d) |  |  |  |
| 48 | Structural Framing, Area 3 | 2016-05-10 → 2016-06-07 (+28d) | 2016-05-23 → 2016-06-20 (+28d) |  |  |  |
| 49 | Structural Framing, Area 4 | 2016-05-24 → 2016-06-21 (+28d) | 2016-06-03 → 2016-07-01 (+28d) |  |  |  |
| 50 | Plumb/ Bolt / Weld Area 1 | 2016-04-28 → 2016-05-26 (+28d) | 2016-05-04 → 2016-06-01 (+28d) |  |  |  |
| 51 | Plumb/ Bolt / Weld Area 2 | 2016-05-10 → 2016-06-07 (+28d) | 2016-05-16 → 2016-06-13 (+28d) |  |  |  |
| 52 | Plumb/ Bolt / Weld Area 3 | 2016-05-24 → 2016-06-21 (+28d) | 2016-05-30 → 2016-06-27 (+28d) |  |  |  |
| 53 | Plumb/ Bolt / Weld Area 4 | 2016-06-06 → 2016-07-04 (+28d) | 2016-06-10 → 2016-07-08 (+28d) |  |  |  |
| 54 | Exterior Stairs | 2016-08-30 → 2016-09-27 (+28d) | 2016-09-08 → 2016-10-06 (+28d) |  |  |  |
| 55 | Interior Stairs, Ground Floor | 2016-07-06 → 2016-08-03 (+28d) | 2016-07-12 → 2016-08-09 (+28d) |  |  |  |
| 56 | Interior Stairs, First Floor | 2016-07-07 → 2016-08-04 (+28d) | 2016-07-13 → 2016-08-10 (+28d) |  |  |  |
| 57 | Handrails | 2016-12-21 → 2017-01-18 (+28d) | 2016-12-27 → 2017-01-24 (+28d) |  |  |  |
| 58 | **Corrugated Metal Siding** | 2016-07-08 → 2016-08-05 (+28d) | 2016-09-12 → 2016-10-10 (+28d) |  |  |  |
| 59 | Exterior Metal Siding / Backup Framing (Front) | 2016-07-08 → 2016-08-05 (+28d) | 2016-07-15 → 2016-08-12 (+28d) |  |  |  |
| 60 | Exterior Metal Siding / Backup Framing (Left) | 2016-07-18 → 2016-08-15 (+28d) | 2016-07-29 → 2016-08-26 (+28d) |  |  |  |
| 61 | Exterior Metal Siding / Backup Framing (Back) | 2016-08-01 → 2016-08-29 (+28d) | 2016-08-16 → 2016-09-13 (+28d) |  |  |  |
| 62 | Exterior Metal Siding / Backup Framing (Right) | 2016-08-17 → 2016-09-14 (+28d) | 2016-08-25 → 2016-09-22 (+28d) |  |  |  |
| 63 | Exterior Metal Siding / Backup Framing (Mechanical Room) | 2016-08-26 → 2016-09-23 (+28d) | 2016-09-12 → 2016-10-10 (+28d) |  |  |  |
| 64 | **Masonry** | 2016-07-04 → 2016-08-01 (+28d) | 2016-07-19 → 2016-08-16 (+28d) |  |  |  |
| 65 | Blockwork / Elevator Shaft, Ground Floor | 2016-07-04 → 2016-08-01 (+28d) | 2016-07-07 → 2016-08-04 (+28d) |  |  |  |
| 66 | Blockwork / Elevator Shaft, 1st Floor | 2016-07-08 → 2016-08-05 (+28d) | 2016-07-13 → 2016-08-10 (+28d) |  |  |  |
| 67 | Blockwork / Elevator Shaft, 2nd Floor | 2016-07-14 → 2016-08-11 (+28d) | 2016-07-19 → 2016-08-16 (+28d) |  |  |  |
| 68 | **Doors and Windows** | 2016-07-18 → 2016-08-15 (+28d) | 2016-11-30 → 2016-12-28 (+28d) |  |  |  |
| 69 | Exterior Doors, Frames, Hardware | 2016-08-30 → 2016-09-27 (+28d) | 2016-09-02 → 2016-09-30 (+28d) |  |  |  |
| 70 | Interior Doors, Frames, Hardware | 2016-11-23 → 2016-12-21 (+28d) | 2016-11-30 → 2016-12-28 (+28d) |  |  |  |

| ID | Task | Start | Finish |
| --- | --- | --- | --- |
| 71 | Glass Entry Doors | 2016-08-04 → 2016-09-01 (+28d) | 2016-08-12 → 2016-09-09 (+28d) |
| 72 | Glass Curtain Wall (Front) | 2016-07-18 → 2016-08-15 (+28d) | 2016-08-12 → 2016-09-09 (+28d) |
| 73 | Punched Windows (Left) | 2016-08-15 → 2016-09-12 (+28d) | 2016-08-18 → 2016-09-15 (+28d) |
| 74 | Punched Windows (Back) | 2016-08-19 → 2016-09-16 (+28d) | 2016-08-26 → 2016-09-23 (+28d) |
| 75 | Punched Windows (Right) | 2016-08-29 → 2016-09-26 (+28d) | 2016-08-29 → 2016-09-26 (+28d) |
| 76 | Punched Windows (Mechanical Room) | 2016-09-13 → 2016-10-11 (+28d) | 2016-09-13 → 2016-10-11 (+28d) |
| 77 | Glass Railings | 2016-11-23 → 2016-12-21 (+28d) | 2016-11-28 → 2016-12-26 (+28d) |
| 78 | **Finishes** | 2016-10-12 → 2016-11-09 (+28d) | 2016-12-20 → 2017-01-17 (+28d) |
| 79 | Core Walls, Ground Floor | 2016-10-12 → 2016-11-09 (+28d) | 2016-10-25 → 2016-11-22 (+28d) |
| 80 | Core Walls, 1st Floor | 2016-10-26 → 2016-11-23 (+28d) | 2016-11-08 → 2016-12-06 (+28d) |
| 81 | Core Walls, 2nd Floor | 2016-11-09 → 2016-12-07 (+28d) | 2016-11-22 → 2016-12-20 (+28d) |
| 82 | Perimeter Drywall | 2016-10-26 → 2016-11-23 (+28d) | 2016-11-22 → 2016-12-20 (+28d) |
| 83 | Toilet Room Finishes | 2016-11-23 → 2016-12-21 (+28d) | 2016-12-13 → 2017-01-10 (+28d) |
| 84 | Misc. Finishes | 2016-11-23 → 2016-12-21 (+28d) | 2016-12-20 → 2017-01-17 (+28d) |
| 85 | **Thermal and Moisture Protection** | 2016-09-19 → 2016-10-17 (+28d) | 2016-10-25 → 2016-11-22 (+28d) |
| 86 | Roofing, Low Roof | 2016-09-19 → 2016-10-17 (+28d) | 2016-10-04 → 2016-11-01 (+28d) |
| 87 | Roofing, High Roof | 2016-10-05 → 2016-11-02 (+28d) | 2016-10-11 → 2016-11-08 (+28d) |
| 88 | Roof Parapet Cap / Trim | 2016-10-12 → 2016-11-09 (+28d) | 2016-10-25 → 2016-11-22 (+28d) |
| 89 | Temporary Roof at Skylight | 2016-10-12 → 2016-11-09 (+28d) | 2016-10-12 → 2016-11-09 (+28d) |
| 90 | **Specialties** | 2016-09-13 → 2016-10-11 (+28d) | 2016-10-19 → 2016-11-16 (+28d) |
| 91 | Mechanical Room Louvers | 2016-09-13 → 2016-10-11 (+28d) | 2016-09-16 → 2016-10-14 (+28d) |
| 92 | Glass Skylight | 2016-10-13 → 2016-11-10 (+28d) | 2016-10-19 → 2016-11-16 (+28d) |
| 93 | **Conveying Systems** | 2016-06-13 → 2016-07-11 (+28d) | 2016-10-14 → 2016-11-11 (+28d) |
| 94 | Elevator | 2016-07-20 → 2016-08-17 (+28d) | 2016-09-27 → 2016-10-25 (+28d) |
| 95 | Temporary Hoist | 2016-06-13 → 2016-07-11 (+28d) | 2016-10-14 → 2016-11-11 (+28d) |
| 96 | **Mechanical** | 2016-07-20 → 2016-08-17 (+28d) | 2017-01-24 → 2017-02-21 (+28d) |
| 97 | **Plumbing** | 2016-07-20 → 2016-08-17 (+28d) | 2016-12-23 → 2017-01-20 (+28d) |
| 98 | Domestic Water | 2016-07-20 → 2016-08-17 (+28d) | 2016-08-16 → 2016-09-13 (+28d) |
| 99 | Sanitary Sewer | 2016-07-20 → 2016-08-17 (+28d) | 2016-08-16 → 2016-09-13 (+28d) |
| 100 | Toilet Room Fixtures / Trim | 2016-12-14 → 2017-01-11 (+28d) | 2016-12-23 → 2017-01-20 (+28d) |
| 101 | **HVAC** | 2016-10-26 → 2016-11-23 (+28d) | 2017-01-24 → 2017-02-21 (+28d) |
| 102 | Air Handling Unit | 2016-10-26 → 2016-11-23 (+28d) | 2016-11-22 → 2016-12-20 (+28d) |
| 103 | Vertical Ductwork | 2016-11-23 → 2016-12-21 (+28d) | 2016-12-06 → 2017-01-03 (+28d) |
| 104 | Horizontal Ductwork | 2016-12-07 → 2017-01-04 (+28d) | 2017-01-10 → 2017-02-07 (+28d) |
| 105 | Registers / Grilles / Diffusers | 2017-01-11 → 2017-02-08 (+28d) | 2017-01-24 → 2017-02-21 (+28d) |
| 106 | **Electrical** | 2016-10-12 → 2016-11-09 (+28d) | 2016-12-27 → 2017-01-24 (+28d) |
| 107 | Main Switch Gear / Panelboards | 2016-10-26 → 2016-11-23 (+28d) | 2016-11-29 → 2016-12-27 (+28d) |
| 108 | Electrical Distribution | 2016-10-12 → 2016-11-09 (+28d) | 2016-11-29 → 2016-12-27 (+28d) |
| 109 | Electrical Devices | 2016-11-30 → 2016-12-28 (+28d) | 2016-12-13 → 2017-01-10 (+28d) |
| 110 | Light Fixtures | 2016-12-21 → 2017-01-18 (+28d) | 2016-12-27 → 2017-01-24 (+28d) |
| 111 | **Project Completion** | 2017-01-25 → 2017-02-22 (+28d) | 2017-03-29 → 2017-04-26 (+28d) |
| 112 | Commissioning of Mechanical Systems | 2017-01-25 → 2017-02-22 (+28d) | 2017-02-07 → 2017-03-07 (+28d) |
| 113 | Final Inspections | 2017-02-08 → 2017-03-08 (+28d) | 2017-02-21 → 2017-03-21 (+28d) |
| 114 | Punch List | 2017-02-22 → 2017-03-22 (+28d) | 2017-03-07 → 2017-04-04 (+28d) |
| 115 | Final Clean | 2017-03-08 → 2017-04-05 (+28d) | 2017-03-21 → 2017-04-18 (+28d) |
| 116 | Site De-Mobilization | 2017-03-22 → 2017-04-19 (+28d) | 2017-03-28 → 2017-04-25 (+28d) |
| 117 | Certificate of Occupancy | 2017-03-07 → 2017-04-04 (+28d) | 2017-03-07 → 2017-04-04 (+28d) |
| 118 | Project Turnover | 2017-03-29 → 2017-04-26 (+28d) | 2017-03-29 → 2017-04-26 (+28d) |
